@startgantt

title MotorGraphico Creator — corte B (cicle d'autor complet)

caption Esquema de dependències amb tasques en paral·lel. Les dates no són compromisos de lliurament ni treball restant.

' Generat des de planificacion/pla/dades.py. No s'edita a ma.
' 1 dia del Gantt = 1 JORNADA d'esforc (~6 h), no un dia natural.
' Total 243 jornades ≈ 162 setmanes a ~1,5 j/setmana.

Project starts 2026-09-07
saturday are closed
sunday are closed

-- Fase C — Consolidació (62 j) --

[C-01 La curació cura qui toca] as [C01] lasts 2 days
[C01] is colored in #C0503C
[C-02 El minimapa deixa de llegir memòria alliberada] as [C02] lasts 1 days
[C02] is colored in #C0503C
[C-03 L'estat del jugador sobreviu el canvi de nivell] as [C03] lasts 2 days
[C03] is colored in #C0503C
[C-05 Tancament ordenat dels recursos GL] as [C05] lasts 1 days
[C05] is colored in #C0503C
[C-06 L'ajust de text no es penja] as [C06] lasts 1 days
[C06] is colored in #C0503C
[C-07 Les aventures autònomes disparen els seus beats] as [C07] lasts 2 days
[C07] is colored in #C0503C
[C-08 Un guardat antic no escriu fora de rang] as [C08] lasts 1 days
[C08] is colored in #C0503C
[C-09 Propietat de recursos i destrucció polimòrfica] as [C09] lasts 1 days
[C09] is colored in #C0503C
[C-10 El JSON que escrivim el podem tornar a llegir] as [C10] lasts 1 days
[C10] is colored in #C0503C
[C-11 Un sol format de projecte] as [C11] lasts 4 days
[C11] is colored in #C0503C
[C-12 MapDocument es pot editar] as [C12] lasts 5 days
[C12] is colored in #C0503C
[C-16 L'Application delega en SceneManager] as [C16] lasts 4 days
[C16] is colored in #C0503C
[C-19 Un sol culling i un sol contracte d'actualització] as [C19] lasts 2 days
[C19] is colored in #C0503C
[C-20 Un sol escriptor de condicions] as [C20] lasts 2 days
[C20] is colored in #C0503C
[C-21 Un sol generador d'atzar] as [C21] lasts 1 days
[C21] is colored in #C0503C
[C-04 Un enemic invocat per narrativa no trenca el guardat] as [C04] lasts 2 days
[C04] is colored in #C0503C
[C-13 Les entitats del document no perden res] as [C13] lasts 3 days
[C13] is colored in #C0503C
[C-17 World és el propietari de les entitats] as [C17] lasts 6 days
[C17] is colored in #C0503C
[C-22 Retirada de l'API morta] as [C22] lasts 2 days
[C22] is colored in #C0503C
[C-23 El post-processat arriba al joc] as [C23] lasts 4 days
[C23] is colored in #C0503C
[C-14 L'editor treballa sobre MapDocument] as [C14] lasts 6 days
[C14] is colored in #C0503C
[C-18 HandlePool sosté World] as [C18] lasts 2 days
[C18] is colored in #C0503C
[C-24 Xarxa de seguretat al camí que es juga] as [C24] lasts 5 days
[C24] is colored in #C0503C
[C-15 Desar deixa el projecte coherent] as [C15] lasts 2 days
[C15] is colored in #C0503C

-- Fase D — Dades reals (30 j) --

[D-01 Un carregador que no troba res, falla] as [D01] lasts 3 days
[D01] is colored in #E3A82B
[D-02 Habilitats i encanteris] as [D02] lasts 4 days
[D02] is colored in #E3A82B
[D-03 Monstres] as [D03] lasts 3 days
[D03] is colored in #E3A82B
[D-04 Condicions] as [D04] lasts 2 days
[D04] is colored in #E3A82B
[D-05 Objectes, equipament i consumibles] as [D05] lasts 3 days
[D05] is colored in #E3A82B
[D-06 Classes, races i trasfons] as [D06] lasts 3 days
[D06] is colored in #E3A82B
[D-07 Els catàlegs restants] as [D07] lasts 5 days
[D07] is colored in #E3A82B
[D-08 Els enemics del joc són els del catàleg] as [D08] lasts 3 days
[D08] is colored in #E3A82B
[D-09 Les cartes apliquen les seves condicions] as [D09] lasts 2 days
[D09] is colored in #E3A82B
[D-10 CI valida els assets reals] as [D10] lasts 2 days
[D10] is colored in #E3A82B

-- Fase E — Autoria visual i esdeveniments (79 j) --

[E-01 L'esdeveniment és part del document de mapa] as [E01] lasts 3 days
[E01] is colored in #5BA85B
[E-02 Interruptors locals i variables] as [E02] lasts 3 days
[E02] is colored in #5BA85B
[E-10 Espai de treball visual i controls coherents] as [E10] lasts 6 days
[E10] is colored in #5BA85B
[E-03 Planificador, esperes i processos paral·lels] as [E03] lasts 4 days
[E03] is colored in #5BA85B
[E-11 Projectes i arbre de mapes] as [E11] lasts 5 days
[E11] is colored in #5BA85B
[E-04 El joc de comandes] as [E04] lasts 7 days
[E04] is colored in #5BA85B
[E-12 Propietats de mapa, capes i instàncies] as [E12] lasts 4 days
[E12] is colored in #5BA85B
[E-13 Navegador visual i importació de recursos] as [E13] lasts 4 days
[E13] is colored in #5BA85B
[E-14 Selectors de dades i referències] as [E14] lasts 3 days
[E14] is colored in #5BA85B
[E-05 Editor de pàgines d'esdeveniment] as [E05] lasts 8 days
[E05] is colored in #5BA85B
[E-16 Edició RPG mínima del projecte] as [E16] lasts 8 days
[E16] is colored in #5BA85B
[E-06 Editor vertical de comandes] as [E06] lasts 9 days
[E06] is colored in #5BA85B
[E-07 Validació estàtica d'aventures] as [E07] lasts 4 days
[E07] is colored in #5BA85B
[E-08 Depuració pas a pas] as [E08] lasts 5 days
[E08] is colored in #5BA85B
[E-15 Problemes i cerca d'esdeveniments] as [E15] lasts 3 days
[E15] is colored in #5BA85B
[E-09 La missió de la clau, la porta i el cofre] as [E09] lasts 3 days
[E09] is colored in #5BA85B

-- Fase F — Playtest des de l'editor (13 j) --

[F-01 Playtest des de l'editor] as [F01] lasts 4 days
[F01] is colored in #4E86B4
[F-02 Provar des de la casella seleccionada] as [F02] lasts 2 days
[F02] is colored in #4E86B4
[F-03 Recàrrega en calent] as [F03] lasts 4 days
[F03] is colored in #4E86B4
[F-04 Consola i inspector d'estat] as [F04] lasts 3 days
[F04] is colored in #4E86B4

-- Fase G — Tancament del corte B (59 j) --

[G-01 Autosave i recuperació] as [G01] lasts 2 days
[G01] is colored in #8A6BA8
[G-08 Títol i arrencada del projecte] as [G08] lasts 4 days
[G08] is colored in #8A6BA8
[G-02 Les eines d'edició que falten] as [G02] lasts 3 days
[G02] is colored in #8A6BA8
[G-10 Menú de partida, opcions i focus] as [G10] lasts 3 days
[G10] is colored in #8A6BA8
[G-03 Historial per comandes] as [G03] lasts 5 days
[G03] is colored in #8A6BA8
[G-14 HUD, diàlegs i comerç amb accions visibles] as [G14] lasts 3 days
[G14] is colored in #8A6BA8
[G-09 Creació de personatge dins de Nova partida] as [G09] lasts 3 days
[G09] is colored in #8A6BA8
[G-11 Selector de guardats i recuperació de derrota] as [G11] lasts 4 days
[G11] is colored in #8A6BA8
[G-13 Comandes de combat i objectius des de dades] as [G13] lasts 5 days
[G13] is colored in #8A6BA8
[G-12 Inventari, equip i fitxa utilitzables] as [G12] lasts 5 days
[G12] is colored in #8A6BA8
[G-04 Joc d'exemple de trenta minuts] as [G04] lasts 5 days
[G04] is colored in #8A6BA8
[G-05 Tutorial de l'editor] as [G05] lasts 4 days
[G05] is colored in #8A6BA8
[G-06 Empaquetat i exportació] as [G06] lasts 5 days
[G06] is colored in #8A6BA8
[G-07 Congelació dels esquemes] as [G07] lasts 2 days
[G07] is colored in #8A6BA8
[G-15 Assistent d'exportació des de l'editor] as [G15] lasts 3 days
[G15] is colored in #8A6BA8
[G-16 Acceptació de pantalles d'autor i jugador] as [G16] lasts 3 days
[G16] is colored in #8A6BA8

' --- dependencies (tecniques i portes de fase) ---
' En ordre topologic: PlantUML col·loca cada tasca quan llegeix el
' seu enllac i no reajusta les que ja ha situat.
[C03] -> [C04]
[C12] -> [C13]
[C16] -> [C17]
[C21] -> [C22]
[C16] -> [C23]
[C12] -> [C14]
[C13] -> [C14]
[C17] -> [C18]
[C03] -> [C24]
[C16] -> [C24]
[C17] -> [C24]
[C11] -> [C15]
[C14] -> [C15]
' porta de fase C -> D
[C02] -> [D01]
' porta de fase C -> D
[C05] -> [D01]
' porta de fase C -> D
[C06] -> [D01]
' porta de fase C -> D
[C08] -> [D01]
' porta de fase C -> D
[C09] -> [D01]
' porta de fase C -> D
[C10] -> [D01]
' porta de fase C -> D
[C01] -> [D01]
' porta de fase C -> D
[C07] -> [D01]
' porta de fase C -> D
[C19] -> [D01]
' porta de fase C -> D
[C20] -> [D01]
' porta de fase C -> D
[C22] -> [D01]
' porta de fase C -> D
[C04] -> [D01]
' porta de fase C -> D
[C23] -> [D01]
' porta de fase C -> D
[C18] -> [D01]
' porta de fase C -> D
[C24] -> [D01]
' porta de fase C -> D
[C15] -> [D01]
[D01] -> [D02]
[D01] -> [D03]
[D01] -> [D04]
[D01] -> [D05]
[D01] -> [D06]
[D01] -> [D07]
[C17] -> [D08]
[D03] -> [D08]
[C20] -> [D09]
[D04] -> [D09]
[D01] -> [D10]
[D07] -> [D10]
[C13] -> [E01]
' porta de fase D -> E
[D05] -> [E01]
' porta de fase D -> E
[D06] -> [E01]
' porta de fase D -> E
[D02] -> [E01]
' porta de fase D -> E
[D09] -> [E01]
' porta de fase D -> E
[D08] -> [E01]
' porta de fase D -> E
[D10] -> [E01]
[C16] -> [E10]
[C14] -> [E10]
' porta de fase D -> E
[D05] -> [E10]
' porta de fase D -> E
[D06] -> [E10]
' porta de fase D -> E
[D02] -> [E10]
' porta de fase D -> E
[D09] -> [E10]
' porta de fase D -> E
[D08] -> [E10]
' porta de fase D -> E
[D10] -> [E10]
[E01] -> [E02]
[C11] -> [E11]
[E10] -> [E11]
[E02] -> [E03]
[C13] -> [E12]
[E11] -> [E12]
[E11] -> [E13]
[D09] -> [E04]
[E03] -> [E04]
[D10] -> [E14]
[E13] -> [E14]
[C14] -> [E05]
[E01] -> [E05]
[E12] -> [E05]
[E14] -> [E05]
[D03] -> [E16]
[D05] -> [E16]
[D02] -> [E16]
[E14] -> [E16]
[E04] -> [E06]
[E05] -> [E06]
[E04] -> [E07]
[E16] -> [E07]
[E03] -> [E08]
[E06] -> [E08]
[E07] -> [E15]
[E06] -> [E15]
[E07] -> [E09]
[E15] -> [E09]
[E08] -> [E09]
[C16] -> [F01]
[E09] -> [F01]
[F01] -> [F02]
[F01] -> [F03]
[F01] -> [F04]
[C15] -> [G01]
[E10] -> [G01]
' porta de fase F -> G
[F02] -> [G01]
' porta de fase F -> G
[F04] -> [G01]
' porta de fase F -> G
[F03] -> [G01]
[C14] -> [G02]
[E12] -> [G02]
' porta de fase F -> G
[F02] -> [G02]
' porta de fase F -> G
[F04] -> [G02]
' porta de fase F -> G
[F03] -> [G02]
[C16] -> [G08]
[E11] -> [G08]
' porta de fase F -> G
[F02] -> [G08]
' porta de fase F -> G
[F04] -> [G08]
' porta de fase F -> G
[F03] -> [G08]
[C14] -> [G03]
[G02] -> [G03]
[D06] -> [G09]
[E16] -> [G09]
[G08] -> [G09]
[G08] -> [G10]
[C24] -> [G11]
[G09] -> [G11]
[G10] -> [G11]
[D02] -> [G13]
[D09] -> [G13]
[E16] -> [G13]
[G09] -> [G13]
[D05] -> [G14]
[E04] -> [G14]
[G10] -> [G14]
[D05] -> [G12]
[G11] -> [G12]
[E09] -> [G04]
[F03] -> [G04]
[G01] -> [G04]
[G03] -> [G04]
[G14] -> [G04]
[G11] -> [G04]
[G13] -> [G04]
[G12] -> [G04]
[G04] -> [G05]
[G04] -> [G06]
[G04] -> [G07]
[G06] -> [G07]
[E11] -> [G15]
[E15] -> [G15]
[G06] -> [G15]
[F02] -> [G16]
[F04] -> [G16]
[G05] -> [G16]
[G07] -> [G16]
[G15] -> [G16]

' --- fites ---
[Fase C tancada] happens at [C15]'s end
[Fase D tancada] happens at [D10]'s end
[Fase E tancada] happens at [E09]'s end
[Fase F tancada] happens at [F03]'s end
[Fase G tancada] happens at [G16]'s end

' Seguiment C-09: 2026-09-03 qwen — Tancat localment; el tanca formalment el pas per CI
' Seguiment C-10: 2026-09-03 qwen — Tancat localment; el tanca formalment el pas per CI
' Seguiment C-11: 2026-09-03 Codex — Implementat i verificat al workspace; integració Git i CI pendents
' Seguiment C-20: 2026-09-03 Codex — Nucli implementat i verificat localment; paquet encara obert
' Seguiment C-21: 2026-09-03 qwen — Tancat localment; el tanca formalment el pas per CI
' Seguiment C-22: 2026-09-03 qwen + Codex — Nucli i API de dificultat retirats; RuntimeTileMap i CI pendents
@endgantt